Schedule from ProjectLibre, 2019-01-07 to 2019-07-19.

## Calendars

- Padrão: Mon-Fri 09:00-12:00, 13:00-18:00; Sat-Sun off.

## Resources

| Resource |
| --- |
| Não atribuído |
| joão |
| pedro |

## Schedule

| ID | WBS | Task | Duration | Start | Finish | Predecessors | Baseline start | Baseline finish |
| --- | --- | --- | --- | --- | --- | --- | --- | --- |
| 1 | 1 | **Implementação de Sistema de Inspeção e Manutenção** | 140d | 2019-01-07 | 2019-07-19 |  | 2019-01-07 | 2019-07-08 |
| 2 | 1.1 | **Seleção da Ferramenta** | 27d | 2019-01-07 | 2019-02-12 |  | 2019-01-07 | 2019-01-30 |
| 3 | 1.1.1 | **Metodologia de Seleção** | 3d | 2019-01-07 | 2019-01-09 |  | 2019-01-07 | 2019-01-09 |
| 4 | 1.1.1.1 | Estudar metolodologias de seleção disponíveis | 2d | 2019-01-07 | 2019-01-08 |  | 2019-01-07 | 2019-01-08 |
| 5 | 1.1.1.2 | Definir lista curta | 0.5d | 2019-01-09 | 2019-01-09 | 4 | 2019-01-09 | 2019-01-09 |
| 6 | 1.1.1.3 | Definir metodologia | 0.5d | 2019-01-09 | 2019-01-09 | 5 | 2019-01-09 | 2019-01-09 |
| 7 | 1.1.2 | **Definição de requisitos** | 6d | 2019-01-07 | 2019-01-14 |  | 2019-01-07 | 2019-01-14 |
| 8 | 1.1.2.1 | Realizar entrevistas com especialistas para definição dos requisitos-chave | 5d | 2019-01-07 | 2019-01-11 | 4SS | 2019-01-07 | 2019-01-11 |
| 9 | 1.1.2.2 | Definir os requisitos-chave | 1d | 2019-01-14 | 2019-01-14 | 8 | 2019-01-14 | 2019-01-14 |
| 10 | 1.1.3 | **Definição** | 21d | 2019-01-15 | 2019-02-12 |  | 2019-01-15 | 2019-01-30 |
| 11 | 1.1.3.1 | Aplicar questionários aos potenciais fornecedores | 19d | 2019-01-15 | 2019-02-08 | 6, 9 | 2019-01-15 | 2019-01-28 |
| 12 | 1.1.3.2 | Compilar questionários | 1d | 2019-02-11 | 2019-02-11 | 11 | 2019-01-29 | 2019-01-29 |
| 13 | 1.1.3.3 | Definir indicação do vencedor | 1d | 2019-02-12 | 2019-02-12 | 12 | 2019-01-30 | 2019-01-30 |
| 14 | 1.1.3.4 | Solicitar propostas técnica/comercial | 1d | 2019-02-12 | 2019-02-12 | 13SS | 2019-01-30 | 2019-01-30 |
| 15 | 1.2 | **Contratação da Implementadora** | 4d | 2019-02-21 | 2019-02-27 |  | 2019-02-08 | 2019-02-14 |
| 16 | 1.2.1 | **Análise de Propostas** | 3d | 2019-02-21 | 2019-02-26 |  | 2019-02-08 | 2019-02-13 |
| 17 | 1.2.1.1 | Recebimento das Propostas dos potenciais fornecedores | 0d | 2019-02-21 | 2019-02-21 | 14FS+7d | 2019-02-08 | 2019-02-08 |
| 18 | 1.2.1.2 | Analisar propostas | 3d | 2019-02-22 | 2019-02-26 | 17 | 2019-02-11 | 2019-02-13 |
| 19 | 1.2.2 | **Definição** | 1d | 2019-02-27 | 2019-02-27 |  | 2019-02-14 | 2019-02-14 |
| 20 | 1.2.2.1 | Definir vencedor | 1d | 2019-02-27 | 2019-02-27 | 18 | 2019-02-14 | 2019-02-14 |
| 21 | 1.2.2.2 | Divulgar resultado | 1d | 2019-02-27 | 2019-02-27 | 20SS | 2019-02-14 | 2019-02-14 |
| 22 | 1.3 | **Especificação Técnica e Funcional** | 22d | 2019-02-28 | 2019-03-29 |  | 2019-02-15 | 2019-04-29 |
| 23 | 1.3.1 | **Especificação Funcional** | 11d | 2019-02-28 | 2019-03-14 | 21 | 2019-02-15 | 2019-03-01 |
| 24 | 1.3.1.1 | Realizar EF | 9d | 2019-02-28 | 2019-03-12 |  | 2019-02-15 | 2019-02-27 |
| 25 | 1.3.1.2 | Revisar EF | 2d | 2019-03-13 | 2019-03-14 | 24 | 2019-02-28 | 2019-03-01 |
| 26 | 1.3.1.3 | EF concluída | 0d | 2019-03-14 | 2019-03-14 | 25 | 2019-03-01 | 2019-03-01 |

Notes:
- 5: Definida lista curta, contemplando as empresas: - x - y - z
- 14: Serão solicitadas propostas dos 3 primeiros colocados na compilação dos questionários.

| ID | WBS | Task | Duration | Start | Finish | Predecessors | Baseline start | Baseline finish |
| --- | --- | --- | --- | --- | --- | --- | --- | --- |
| 27 | 1.3.2 | **Especificação Técnica** | 11d | 2019-03-15 | 2019-03-29 |  | 2019-03-04 | 2019-03-18 |
| 28 | 1.3.2.1 | Realizar ET | 9d | 2019-03-15 | 2019-03-27 | 26 | 2019-03-04 | 2019-03-14 |
| 29 | 1.3.2.2 | Revisar ET | 2d | 2019-03-28 | 2019-03-29 | 28 | 2019-03-15 | 2019-03-18 |
| 30 | 1.3.2.3 | ET concluída | 0d | 2019-03-29 | 2019-03-29 | 29 | 2019-03-18 | 2019-03-18 |
| 31 | 1.4 | **Desenvolvimento / Customização** | 41d | 2019-03-15 | 2019-05-10 |  | 2019-03-04 | 2019-04-29 |
| 32 | 1.4.1 | Identificar necessidades de desenvolvimento / customização | 5d | 2019-03-15 | 2019-03-21 | 26 | 2019-03-04 | 2019-03-08 |
| 33 | 1.4.2 | Priorizar necessidades de desenvolvimento / customização | 1d | 2019-03-22 | 2019-03-22 | 32 | 2019-03-11 | 2019-03-11 |
| 34 | 1.4.3 | Desenvolver / customizar | 30d | 2019-04-01 | 2019-05-10 | 30, 33 | 2019-03-19 | 2019-04-29 |
| 35 | 1.5 | **Testes** | 15d | 2019-05-13 | 2019-05-31 |  | 2019-04-30 | 2019-05-20 |
| 36 | 1.5.1 | Realizar testes unitários | 10d | 2019-05-13 | 2019-05-24 | 34 | 2019-04-30 | 2019-05-13 |
| 37 | 1.5.2 | Realizar teste integrado | 5d | 2019-05-27 | 2019-05-31 | 36 | 2019-05-14 | 2019-05-20 |
| 38 | 1.6 | **Implantação** | 35d | 2019-06-03 | 2019-07-19 |  | 2019-05-21 | 2019-07-08 |
| 39 | 1.6.1 | Implantar onda1 | 5d | 2019-06-03 | 2019-06-07 | 37 | 2019-05-21 | 2019-05-27 |
| 40 | 1.6.2 | Implantar onda2 | 5d | 2019-06-22 | 2019-06-28 | 39FS+10d | 2019-06-11 | 2019-06-17 |
| 41 | 1.6.3 | Implantar onda3 | 5d | 2019-07-13 | 2019-07-19 | 40FS+10d | 2019-07-02 | 2019-07-08 |
